# Planificación

Schedule from MS Project, 2014-03-18 to 2015-04-18, A marks actual dates.

## Calendars

- Estándar: Mon-Sun 09:00-13:00, 15:00-19:00. Exceptions (off unless hours are given): 2014-06-28 09:00-13:00, 15:00-19:00, 2014-10-25 09:00-13:00, 15:00-19:00, 2014-11-29 09:00-13:00, 15:00-19:00, 2015-01-03 09:00-13:00, 15:00-19:00, 2015-01-10 09:00-13:00, 15:00-19:00, 2015-02-14 09:00-13:00, 15:00-19:00.

## Resources

| Resource |
| --- |
| Facu |
| Paula |
| Florencia |
| Antonio |

## Schedule

| ID | WBS | Task | Type | Duration | Start | Finish | Predecessors | Complete | Constraint | Resources | Work | Actual work |
| --- | --- | --- | --- | --- | --- | --- | --- | --- | --- | --- | --- | --- |
| 1 | 1 | **Sprint 0** |  | 78d | 2014-03-18 A | 2014-06-03 A |  | 100% |  |  | 5800h | 5800h |
| 2 | 1.1 | **Realizar Propuesta Inicial** |  | 22d | 2014-03-18 A | 2014-04-08 A |  | 100% |  | Antonio; Facu; Florencia; Paula | 1344h | 1344h |
| 3 | 1.1.1 | Analizar la problematica y su contexto | manual | 7d | 2014-03-18 A | 2014-03-26 A |  | 100% | start no earlier than 2014-03-31 | Antonio; Facu; Florencia; Paula | 224h | 224h |
| 4 | 1.1.2 | Analizar viabilidad del proyecto | manual | 7d | 2014-03-18 A | 2014-03-26 A |  | 100% | start no earlier than 2014-03-31 | Antonio; Facu; Florencia; Paula | 224h | 224h |
| 5 | 1.1.3 | Definir propuesta de solucion | manual | 7d | 2014-03-18 A | 2014-03-26 A |  | 100% | start no earlier than 2014-03-31 | Antonio; Facu; Florencia; Paula | 224h | 224h |
| 6 | 1.1.4 | Preparar presentación | manual | 4d | 2014-03-31 A | 2014-04-03 A | 3, 4, 5 | 100% |  | Antonio; Facu; Florencia; Paula | 128h | 128h |
| 7 | 1.1.5 | Exponer | manual | 1d | 2014-04-08 A | 2014-04-08 A |  | 100% |  | Antonio; Facu; Florencia; Paula | 32h | 32h |
| 8 | 1.2 | **Realizar Calendarización** |  | 17d | 2014-04-15 A | 2014-05-07 A |  | 100% |  | Antonio; Facu; Florencia; Paula | 920h | 920h |
| 9 | 1.2.1 | Armar WBS | manual | 7d | 2014-04-15 A | 2014-04-23 A |  | 100% |  | Antonio; Facu; Florencia; Paula | 224h | 224h |
| 10 | 1.2.2 | Correccion WBS |  | 2d | 2014-04-24 A | 2014-04-25 A | 9 | 100% |  | Antonio; Facu; Florencia; Paula | 64h | 64h |
| 11 | 1.2.3 | Armar calendario | manual | 7d | 2014-04-28 A | 2014-05-06 A | 10 | 100% |  | Antonio; Facu; Florencia; Paula | 224h | 224h |
| 12 | 1.3 | **Realizar Estudio Inicial** |  | 32d | 2014-04-08 A | 2014-05-09 A | 2 | 100% |  | Antonio; Facu; Florencia; Paula | 2080h | 2080h |
| 13 | 1.3.1 | Analizar la problematica y su contexto |  | 14d | 2014-04-09 A | 2014-04-28 A |  | 100% |  | Antonio; Facu; Florencia; Paula | 448h | 448h |
| 14 | 1.3.2 | Analizar soluciones existentes en el mercado |  | 2d | 2014-04-09 A | 2014-04-10 A |  | 100% |  | Antonio; Facu; Florencia; Paula | 64h | 64h |
| 15 | 1.3.3 | Definir alcances |  | 7d | 2014-04-09 A | 2014-04-17 A |  | 100% |  | Antonio; Facu; Florencia; Paula | 224h | 224h |
| 16 | 1.3.4 | Realizar analisis de Factibilidad | manual | 1d | 2014-04-08 A | 2014-04-09 A |  | 100% |  | Antonio; Facu; Florencia; Paula | 32h | 32h |
| 17 | 1.3.5 | Realizar Encuestas |  | 10d | 2014-04-28 A | 2014-05-09 A |  | 100% | finish no earlier than 2014-05-09 | Antonio; Facu; Florencia; Paula | 320h | 320h |
| 18 | 1.3.6 | Estudiar dominio | manual | 7d | 2014-04-08 A | 2014-04-16 A |  | 100% |  | Antonio; Facu; Florencia; Paula | 224h | 224h |
| 19 | 1.4 | Realizar plan de configuración | manual | 7d | 2014-05-07 A | 2014-05-13 A |  | 100% |  | Florencia | 56h | 56h |
| 20 | 1.5 | **Realizar Plan de Riesgos** |  | 8d | 2014-05-13 A | 2014-05-20 A |  | 100% |  | Facu | 104h | 104h |
| 21 | 1.5.1 | Identificar, clasificar y priorizar riesgos | manual | 3d | 2014-05-13 A | 2014-05-15 A |  | 100% |  | Facu | 24h | 24h |
| 22 | 1.5.2 | Realizar plan mitigación | manual | 2d | 2014-05-16 A | 2014-05-19 A | 21 | 100% |  | Facu | 16h | 16h |
| 23 | 1.5.3 | Realizar plan de contingencia | manual | 2d | 2014-05-16 A | 2014-05-19 A | 21 | 100% |  | Facu | 16h | 16h |
| 24 | 1.6 | **Realizar Plan de Métricas** |  | 7d | 2014-05-20 A | 2014-05-26 A |  | 100% |  | Paula | 168h | 168h |
| 25 | 1.6.1 | Identificar metricas | manual | 7d | 2014-05-20 A | 2014-05-26 A |  | 100% |  | Paula | 56h | 56h |
| 26 | 1.6.2 | Definir responsables y método de medicion | manual | 7d | 2014-05-20 A | 2014-05-26 A |  | 100% |  | Paula | 56h | 56h |

| ID | WBS | Task | Type | Duration | Start | Finish | Predecessors | Complete | Actual finish | Constraint | Resources | Work | Actual work |
| --- | --- | --- | --- | --- | --- | --- | --- | --- | --- | --- | --- | --- | --- |
| 27 | 1.7 | **Realizar Plan de Testing** |  | 9d | 2014-05-20 A | 2014-05-28 A |  | 100% |  |  | Paula; Florencia | 232h | 232h |
| 28 | 1.7.1 | Definir tipos de pruebas |  | 7d | 2014-05-20 A | 2014-05-28 A |  | 100% |  |  | Paula | 56h | 56h |
| 29 | 1.7.2 | Definir estrategia de prueba |  | 7d | 2014-05-20 A | 2014-05-28 A |  | 100% |  |  | Paula | 56h | 56h |
| 30 | 1.7.3 | Definir nivel de cobertura |  | 7d | 2014-05-20 A | 2014-05-28 A |  | 100% |  |  | Paula | 56h | 56h |
| 31 | 1.7.4 | Correcciones | manual | 1d | 2014-05-24 A | 2014-05-24 A |  | 100% |  |  | Florencia | 8h | 8h |
| 32 | 1.8 | Analizar Impacto Ambiental | manual | 7d | 2014-05-20 A | 2014-05-26 A |  | 100% |  |  | Antonio; Facu; Florencia; Paula | 224h | 224h |
| 33 | 1.9 | **Realizar Presentación de Estudio Inicial** |  | 7d | 2014-05-19 A | 2014-05-25 | 12 | 100% | 2014-05-27 |  | Antonio; Facu; Florencia; Paula | 448h | 448h |
| 34 | 1.9.1 | Preparar presentación |  | 3d | 2014-05-19 A | 2014-05-21 A |  | 100% |  |  | Antonio; Facu; Florencia; Paula | 96h | 96h |
| 35 | 1.9.2 | Elaborar presentación |  | 3d | 2014-05-22 A | 2014-05-24 A | 34 | 100% |  |  | Antonio; Facu; Florencia; Paula | 96h | 96h |
| 36 | 1.9.3 | Exponer |  | 1d | 2014-05-27 A | 2014-05-27 A |  | 100% |  | start no earlier than 2014-05-27 | Antonio; Facu; Florencia; Paula | 32h | 32h |
| 37 | 1.10 | **Preparar Product Backlog** |  | 6d | 2014-05-29 A | 2014-06-03 A | 33, 32, 27, 24 | 100% |  |  | Antonio; Paula | 96h | 96h |
| 38 | 1.10.1 | Identificar historias de usuario |  | 4d | 2014-05-29 A | 2014-06-01 A |  | 100% |  |  |  |  |  |
| 39 | 1.10.2 | Priorizar historias de usuario |  | 4d | 2014-05-29 A | 2014-06-01 A |  | 100% |  |  |  |  |  |
| 40 | 1.10.3 | Estimar historias de usuario |  | 4d | 2014-05-29 A | 2014-06-01 A |  | 100% |  |  |  |  |  |
| 41 | 1.11 | **Realizar ERS** |  | 3d | 2014-05-29 A | 2014-05-31 A | 33, 32, 27, 24 | 100% |  |  | Antonio; Facu; Florencia; Paula | 96h | 96h |
| 42 | 1.11.1 | Entrevistar expertos en dominio |  | 3d | 2014-05-29 A | 2014-05-31 A |  | 100% |  |  |  |  |  |
| 43 | 1.11.2 | Identificar funcionalidades |  | 3d | 2014-05-29 A | 2014-05-31 A |  | 100% |  |  |  |  |  |
| 44 | 1.11.3 | Especificar funcionalidades |  | 3d | 2014-05-29 A | 2014-05-31 A |  | 100% |  |  |  |  |  |
| 45 | 1.11.4 | Definir reglas de negocio |  | 3d | 2014-05-29 A | 2014-05-31 A |  | 100% |  |  |  |  |  |
| 46 | 1.12 | **Definir Metodología y Herramientas de Trabajo** |  | 1d | 2014-06-01 A | 2014-06-01 A | 41 | 100% |  |  | Antonio; Facu; Florencia; Paula | 32h | 32h |
| 47 | 1.12.1 | Definir y preparar entorno de trabajo |  | 1d | 2014-06-01 A | 2014-06-01 A |  | 100% |  |  |  |  |  |
| 48 | 1.12.2 | Definir ciclo de vida del sw |  | 1d | 2014-06-01 A | 2014-06-01 A |  | 100% |  |  |  |  |  |
| 49 | 2 | **Sprint 1** |  | 22d | 2014-06-07 A | 2014-06-28 A | 1 | 100% |  |  |  | 1504h | 1504h |
| 50 | 2.1 | Realizar Sprint Planning | manual | 1d | 2014-06-07 A | 2014-06-07 A |  | 100% |  |  | Antonio; Facu; Florencia; Paula | 32h | 32h |
| 51 | 2.2 | Investigar tecnologías de desarrollo | manual | 22d | 2014-06-07 A | 2014-06-28 A |  | 100% |  |  | Facu; Paula | 352h | 352h |
| 52 | 2.3 | Investigar Algoritmos de Generación de fixture | manual | 22d | 2014-06-07 A | 2014-06-28 A |  | 100% |  |  | Antonio; Florencia | 352h | 352h |
| 53 | 2.4 | Analizar y Especificar los requerimientos | manual | 8d | 2014-06-07 A | 2014-06-14 A |  | 100% |  |  | Antonio; Florencia | 128h | 128h |

| ID | WBS | Task | Type | Duration | Start | Finish | Predecessors | Complete | Actual finish | Constraint | Resources | Work | Actual work |
| --- | --- | --- | --- | --- | --- | --- | --- | --- | --- | --- | --- | --- | --- |
| 54 | 2.5 | **Diseñar Solución** |  | 1d | 2014-06-14 A | 2014-06-14 A |  | 100% |  |  |  |  |  |
| 55 | 2.5.1 | Actualizar modelos existentes | manual | 1d | 2014-06-14 A | 2014-06-14 A |  | 100% |  |  |  |  |  |
| 56 | 2.5.2 | Crear nuevos modelos | manual | 1d | 2014-06-14 A | 2014-06-14 A |  | 100% |  |  |  |  |  |
| 57 | 2.6 | Desarrollar | manual | 6d | 2014-06-21 A | 2014-06-26 A |  | 100% |  |  | Antonio; Facu; Paula | 144h | 144h |
| 58 | 2.7 | Diseño de UI | manual | 11d | 2014-06-14 A | 2014-06-24 A |  | 100% |  |  | Facu | 88h | 88h |
| 59 | 2.8 | Testear | manual | 3d | 2014-06-26 A | 2014-06-28 A |  | 100% |  |  | Paula | 24h | 24h |
| 60 | 2.9 | Gestionar cambios | manual | 22d | 2014-06-07 A | 2014-06-28 A |  | 100% |  |  | Florencia | 176h | 176h |
| 61 | 2.10 | Realizar seguimiento y control de riesgos | manual | 22d | 2014-06-07 A | 2014-06-28 A |  | 100% |  |  | Facu | 176h | 176h |
| 62 | 2.11 | Realizar Sprint Review | manual | 1d | 2014-06-28 A | 2014-06-28 A |  | 100% |  |  | Antonio; Facu; Florencia; Paula | 32h | 32h |
| 63 | 3 | Realizar reunión retrospectiva |  | 1d | 2014-06-28 A | 2014-06-28 A |  | 100% |  | start no earlier than 2014-06-28 |  |  |  |
| 64 | 4 | **Sprint 2** |  | 22d | 2014-06-28 A | 2014-07-19 | 63 | 100% | 2014-06-28 |  |  |  |  |
| 65 | 4.1 | Realizar Sprint Planning | manual | 1d | 2014-06-28 A | 2014-06-28 A |  | 100% |  |  |  |  |  |
| 66 | 4.2 | Analizar y Especificar los requerimientos | manual | 1d | 2014-06-28 A | 2014-06-28 A |  | 100% |  |  |  |  |  |
| 67 | 4.3 | **Diseñar Solución** |  | 1d? | 2014-06-28 A | 2014-06-28 A |  | 100% |  |  |  |  |  |
| 68 | 4.3.1 | Actualizar modelos existentes | manual | 1d | 2014-06-28 A | 2014-06-28 A |  | 100% |  |  |  |  |  |
| 69 | 4.3.2 | Crear nuevos modelos | manual | 1d | 2014-06-28 A | 2014-06-28 A |  | 100% |  |  |  |  |  |
| 70 | 4.4 | Desarrollar | manual | 1d | 2014-06-28 A | 2014-06-28 A |  | 100% |  |  |  |  |  |
| 71 | 4.5 | Testear | manual | 1d | 2014-06-28 A | 2014-06-28 A |  | 100% |  |  |  |  |  |
| 72 | 4.6 | Implementar | manual | 1d | 2014-06-28 A | 2014-06-28 A |  | 100% |  |  |  |  |  |
| 73 | 4.7 | Gestionar cambios | manual | 1d | 2014-06-28 A | 2014-06-28 A |  | 100% |  |  |  |  |  |
| 74 | 4.8 | Realizar seguimiento y control de riesgos | manual | 1d | 2014-06-28 A | 2014-06-28 A |  | 100% |  |  |  |  |  |
| 75 | 4.9 | Realizar Sprint Review | manual | 1d | 2014-06-28 A | 2014-06-28 A |  | 100% |  |  |  |  |  |
| 76 | 5 | Realizar reunión retrospectiva |  | 1d | 2014-07-19 A | 2014-07-19 A |  | 100% |  | start no earlier than 2014-07-19 |  |  |  |
| 77 | 6 | **Sprint 3** |  | 22d | 2014-07-19 A | 2014-08-09 | 76 | 100% | 2014-07-19 |  |  |  |  |
| 78 | 6.1 | Realizar Sprint Planning | manual | 1d | 2014-07-19 A | 2014-07-19 A |  | 100% |  |  |  |  |  |
| 79 | 6.2 | Analizar y Especificar los requerimientos | manual | 1d | 2014-07-19 A | 2014-07-19 A |  | 100% |  |  |  |  |  |

| ID | WBS | Task | Type | Duration | Start | Finish | Predecessors | Complete | Remaining | Actual finish | Constraint | Resources | Work | Actual work |
| --- | --- | --- | --- | --- | --- | --- | --- | --- | --- | --- | --- | --- | --- | --- |
| 80 | 6.3 | **Diseñar Solución** |  | 1d? | 2014-07-19 A | 2014-07-19 A |  | 100% |  |  |  |  |  |  |
| 81 | 6.3.1 | Actualizar modelos existentes | manual | 1d | 2014-07-19 A | 2014-07-19 A |  | 100% |  |  |  |  |  |  |
| 82 | 6.3.2 | Crear nuevos modelos | manual | 1d | 2014-07-19 A | 2014-07-19 A |  | 100% |  |  |  |  |  |  |
| 83 | 6.4 | Desarrollar | manual | 1d | 2014-07-19 A | 2014-07-19 A |  | 100% |  |  |  |  |  |  |
| 84 | 6.5 | Testear | manual | 1d | 2014-07-19 A | 2014-07-19 A |  | 100% |  |  |  |  |  |  |
| 85 | 6.6 | Implementar | manual | 1d | 2014-07-19 A | 2014-07-19 A |  | 100% |  |  |  |  |  |  |
| 86 | 6.7 | Gestionar cambios | manual | 1d | 2014-07-19 A | 2014-07-19 A |  | 100% |  |  |  |  |  |  |
| 87 | 6.8 | Realizar seguimiento y control de riesgos | manual | 1d | 2014-07-19 A | 2014-07-19 A |  | 100% |  |  |  |  |  |  |
| 88 | 6.9 | Realizar Sprint Review | manual | 1d | 2014-07-19 A | 2014-07-19 A |  | 100% |  |  |  |  |  |  |
| 89 | 7 | Realizar reunión retrospectiva |  | 1d | 2014-08-09 A | 2014-08-09 A |  | 100% |  |  | start no earlier than 2014-08-09 |  |  |  |
| 90 | 8 | **Sprint 4** |  | 21d | 2014-08-09 A | 2014-08-30 | 89 | 97% | 0.63d |  |  |  | 3088h | 1777.33h |
| 91 | 8.1 | Realizar Sprint Planning | manual | 1d | 2014-08-09 A | 2014-08-10 A |  | 100% |  |  |  | Antonio; Facu; Florencia; Paula | 32h | 32h |
| 92 | 8.2 | Investigar Algoritmos de Generación de fixture | manual | 1d | 2014-08-09 A | 2014-08-10 |  | 90% | 0.1d |  |  | Antonio; Florencia | 16h | 14.4h |
| 93 | 8.3 | **Administrar Canchas** |  | 21d | 2014-08-09 A | 2014-08-30 A |  | 100% |  |  |  | Paula | 168h | 168h |
| 94 | 8.3.1 | **Registrar Cancha** |  | 21d | 2014-08-09 A | 2014-08-30 |  | 100% |  | 2014-08-10 |  |  |  |  |
| 95 | 8.3.1.1 | Desarrollo | manual | 1d | 2014-08-09 A | 2014-08-10 A |  | 100% |  |  |  |  |  |  |
| 96 | 8.3.1.2 | Testing | manual | 1d | 2014-08-09 A | 2014-08-10 A |  | 100% |  |  |  |  |  |  |
| 97 | 8.3.2 | **Modificar Cancha** |  | 21d | 2014-08-09 A | 2014-08-30 |  | 100% |  | 2014-08-10 |  |  |  |  |
| 98 | 8.3.2.1 | Desarrollo | manual | 1d | 2014-08-09 A | 2014-08-10 A |  | 100% |  |  |  |  |  |  |
| 99 | 8.3.2.2 | Testing | manual | 1d | 2014-08-09 A | 2014-08-10 A |  | 100% |  |  |  |  |  |  |
| 100 | 8.3.3 | **Eliminar Cancha** |  | 21d | 2014-08-09 A | 2014-08-30 |  | 100% |  | 2014-08-10 |  |  |  |  |
| 101 | 8.3.3.1 | Desarrollo | manual | 1d | 2014-08-09 A | 2014-08-10 A |  | 100% |  |  |  |  |  |  |
| 102 | 8.3.3.2 | Testing | manual | 1d | 2014-08-09 A | 2014-08-10 A |  | 100% |  |  |  |  |  |  |
| 103 | 8.3.4 | **Consultar Cancha** |  | 21d | 2014-08-09 A | 2014-08-30 |  | 100% |  | 2014-08-10 |  |  |  |  |
| 104 | 8.3.4.1 | Desarrollo | manual | 1d | 2014-08-09 A | 2014-08-10 A |  | 100% |  |  |  |  |  |  |
| 105 | 8.3.4.2 | Testing | manual | 1d | 2014-08-09 A | 2014-08-10 A |  | 100% |  |  |  |  |  |  |

| ID | WBS | Task | Type | Duration | Start | Finish | Complete | Actual finish | Resources | Work | Actual work |
| --- | --- | --- | --- | --- | --- | --- | --- | --- | --- | --- | --- |
| 106 | 8.4 | **Administrar Jugadores** |  | 21d | 2014-08-09 A | 2014-08-29 A | 100% |  | Paula; Facu | 336h | 336h |
| 107 | 8.4.1 | **Registrar Jugador** |  | 21d | 2014-08-09 A | 2014-08-29 | 100% | 2014-08-10 |  |  |  |
| 108 | 8.4.1.1 | Desarrollo | manual | 2d | 2014-08-09 A | 2014-08-10 A | 100% |  |  |  |  |
| 109 | 8.4.1.2 | Testing | manual | 2d | 2014-08-09 A | 2014-08-10 A | 100% |  |  |  |  |
| 110 | 8.4.2 | **Modificar Jugador** |  | 21d | 2014-08-09 A | 2014-08-29 | 100% | 2014-08-10 |  |  |  |
| 111 | 8.4.2.1 | Desarrollo | manual | 2d | 2014-08-09 A | 2014-08-10 A | 100% |  |  |  |  |
| 112 | 8.4.2.2 | Testing | manual | 1d | 2014-08-09 A | 2014-08-09 A | 100% |  |  |  |  |
| 113 | 8.4.3 | **Eliminar Jugador** |  | 21d | 2014-08-09 A | 2014-08-29 | 100% | 2014-08-09 |  |  |  |
| 114 | 8.4.3.1 | Desarrollo | manual | 1d | 2014-08-09 A | 2014-08-09 A | 100% |  |  |  |  |
| 115 | 8.4.3.2 | Testing | manual | 1d | 2014-08-09 A | 2014-08-09 A | 100% |  |  |  |  |
| 116 | 8.4.4 | Consultar Jugador | manual | 21d | 2014-08-09 A | 2014-08-29 A | 100% |  |  |  |  |
| 117 | 8.5 | **Administrar Equipos** |  | 21d | 2014-08-09 A | 2014-08-30 A | 100% |  | Paula; Facu | 168h | 168h |
| 118 | 8.5.1 | **Eliminar Equipo** |  | 21d | 2014-08-09 A | 2014-08-30 | 100% | 2014-08-10 |  |  |  |
| 119 | 8.5.1.1 | Desarrollo | manual | 1d | 2014-08-09 A | 2014-08-10 A | 100% |  |  |  |  |
| 120 | 8.5.1.2 | Testing | manual | 1d | 2014-08-09 A | 2014-08-10 A | 100% |  |  |  |  |
| 121 | 8.6 | **Administrar Árbitros** |  | 21d | 2014-08-09 A | 2014-08-29 A | 100% |  | Paula | 168h | 168h |
| 122 | 8.6.1 | **Registrar Árbitro** |  | 21d | 2014-08-09 A | 2014-08-29 | 100% | 2014-08-10 |  |  |  |
| 123 | 8.6.1.1 | Desarrollo | manual | 1d | 2014-08-10 A | 2014-08-10 A | 100% |  |  |  |  |
| 124 | 8.6.1.2 | Testing | manual | 1d | 2014-08-09 A | 2014-08-09 A | 100% |  |  |  |  |
| 125 | 8.6.2 | **Modificar Árbitro** |  | 1d | 2014-08-09 A | 2014-08-09 A | 100% |  |  |  |  |
| 126 | 8.6.2.1 | Desarrollo | manual | 1d | 2014-08-09 A | 2014-08-09 A | 100% |  |  |  |  |
| 127 | 8.6.2.2 | Testing | manual | 1d | 2014-08-09 A | 2014-08-09 A | 100% |  |  |  |  |
| 128 | 8.6.3 | **Eliminar Árbitro** |  | 1d | 2014-08-09 A | 2014-08-09 A | 100% |  |  |  |  |
| 129 | 8.6.3.1 | Desarrollo | manual | 1d | 2014-08-09 A | 2014-08-09 A | 100% |  |  |  |  |
| 130 | 8.6.3.2 | Testing | manual | 1d | 2014-08-09 A | 2014-08-09 A | 100% |  |  |  |  |

| ID | WBS | Task | Type | Duration | Start | Finish | Complete | Remaining | Actual finish | Resources | Work | Actual work |
| --- | --- | --- | --- | --- | --- | --- | --- | --- | --- | --- | --- | --- |
| 131 | 8.6.4 | **Consultar Árbitro** |  | 1d | 2014-08-09 A | 2014-08-09 A | 100% |  |  |  |  |  |
| 132 | 8.6.4.1 | Desarrollo | manual | 1d | 2014-08-09 A | 2014-08-09 A | 100% |  |  |  |  |  |
| 133 | 8.6.4.2 | Testing | manual | 1d | 2014-08-09 A | 2014-08-09 A | 100% |  |  |  |  |  |
| 134 | 8.7 | **Modificar Usuario** |  | 21d | 2014-08-09 A | 2014-08-30 A | 100% |  |  | Florencia | 168h | 168h |
| 135 | 8.7.1 | Desarrollo | manual | 1d | 2014-08-09 A | 2014-08-10 A | 100% |  |  |  |  |  |
| 136 | 8.7.2 | Testing | manual | 1d | 2014-08-09 A | 2014-08-10 A | 100% |  |  |  |  |  |
| 137 | 8.8 | **Administrar Edición** |  | 21d | 2014-08-09 A | 2014-08-30 | 78% | 4.67d |  | Antonio; Facu; Florencia; Paula | 1392h | 82.93h |
| 138 | 8.8.1 | **Eliminar Edición No Comenzada** |  | 21d | 2014-08-10 | 2014-08-30 |  |  |  | Antonio; Facu; Florencia; Paula | 680h |  |
| 139 | 8.8.1.1 | Desarrollo | manual | 1d? | 2014-08-10 | 2014-08-10 |  |  |  | Paula | 8h |  |
| 140 | 8.8.1.2 | Testing | manual | 1d? | 2014-08-10 | 2014-08-10 |  |  |  |  |  |  |
| 141 | 8.8.2 | **Modificar Edición No Comenzada** |  | 21d | 2014-08-09 A | 2014-08-30 | 100% |  | 2014-08-10 |  | 8h | 8h |
| 142 | 8.8.2.1 | Desarrollo | manual | 1d | 2014-08-09 A | 2014-08-10 A | 100% |  |  | Paula | 8h | 8h |
| 143 | 8.8.2.2 | Testing | manual | 1d | 2014-08-09 A | 2014-08-10 A | 100% |  |  |  |  |  |
| 144 | 8.8.3 | **Registrar Configuraciones** |  | 21d | 2014-08-09 A | 2014-08-30 | 100% |  | 2014-08-10 |  | 16h | 16h |
| 145 | 8.8.3.1 | Desarrollo | manual | 1d | 2014-08-09 A | 2014-08-10 A | 100% |  |  | Antonio; Florencia | 16h | 16h |
| 146 | 8.8.3.2 | Testing | manual | 1d | 2014-08-09 A | 2014-08-10 A | 100% |  |  |  |  |  |
| 147 | 8.8.4 | **Asignar equipos a la edición** |  | 21d | 2014-08-09 A | 2014-08-30 | 100% |  | 2014-08-10 |  | 16h | 16h |
| 148 | 8.8.4.1 | Diseño de Interfaz | manual | 1d | 2014-08-09 A | 2014-08-10 A | 100% |  |  | Facu | 8h | 8h |
| 149 | 8.8.4.2 | Desarrollar | manual | 1d | 2014-08-09 A | 2014-08-10 A | 100% |  |  | Paula | 8h | 8h |
| 150 | 8.8.4.3 | Testear | manual | 1d | 2014-08-09 A | 2014-08-10 A | 100% |  |  |  |  |  |
| 151 | 8.9 | **Generación de Fixture Todos contra todos** |  | 21d | 2014-08-09 A | 2014-08-30 A | 100% |  |  | Antonio; Facu; Florencia | 576h | 576h |
| 152 | 8.9.1 | **Registrar Fase** |  | 21d | 2014-08-09 A | 2014-08-30 | 100% |  | 2014-08-10 |  | 40h | 40h |
| 153 | 8.9.1.1 | Diseño de solución | manual | 1d | 2014-08-09 A | 2014-08-10 A | 100% |  |  | Antonio; Florencia | 16h | 16h |
| 154 | 8.9.1.2 | Diseño de Interfaz | manual | 1d | 2014-08-09 A | 2014-08-10 A | 100% |  |  | Antonio; Facu | 16h | 16h |
| 155 | 8.9.1.3 | Desarrollo | manual | 1d | 2014-08-09 A | 2014-08-10 A | 100% |  |  | Florencia | 8h | 8h |
| 156 | 8.9.1.4 | Testing | manual | 1d | 2014-08-09 A | 2014-08-10 A | 100% |  |  |  |  |  |

| ID | WBS | Task | Type | Duration | Start | Finish | Predecessors | Complete | Remaining | Actual finish | Total slack | Free slack | Constraint | Resources | Work | Actual work |
| --- | --- | --- | --- | --- | --- | --- | --- | --- | --- | --- | --- | --- | --- | --- | --- | --- |
| 157 | 8.9.2 | **Mostrar Fixture** |  | 21d | 2014-08-10 A | 2014-08-30 |  | 100% |  | 2014-08-10 |  |  |  |  | 32h | 32h |
| 158 | 8.9.2.1 | Diseño de Interfaz | manual | 1d | 2014-08-10 A | 2014-08-10 A |  | 100% |  |  |  |  |  | Antonio; Facu | 16h | 16h |
| 159 | 8.9.2.2 | Desarrollo | manual | 1d | 2014-08-10 A | 2014-08-10 A |  | 100% |  |  |  |  |  | Florencia; Paula | 16h | 16h |
| 160 | 8.9.2.3 | Testing |  | 1d | 2014-08-10 A | 2014-08-10 A |  | 100% |  |  |  |  |  |  |  |  |
| 161 | 8.10 | Realizar Sprint Review |  | 1d | 2014-08-30 A | 2014-08-30 A |  | 100% |  |  |  |  | finish no earlier than 2014-08-30 | Antonio; Facu; Florencia; Paula | 32h | 32h |
| 162 | 8.11 | Realizar reunión retrospectiva |  | 1d | 2014-08-30 A | 2014-08-30 A |  | 100% |  |  |  |  | start no earlier than 2014-08-30 | Antonio; Facu; Florencia; Paula | 32h | 32h |
| 163 | 9 | **Sprint 5** |  | 22d | 2014-08-30 A | 2014-09-20 A | 162 | 100% |  |  |  |  |  |  | 1008h | 1008h |
| 164 | 9.1 | Realizar Sprint Planning | manual | 1d | 2014-08-30 A | 2014-08-30 A |  | 100% |  |  |  |  |  | Antonio; Facu; Florencia; Paula | 32h | 32h |
| 165 | 9.2 | Administrar Jugadores | manual | 5d | 2014-09-02 A | 2014-09-06 A |  | 100% |  |  |  |  |  | Facu; Paula | 80h | 80h |
| 166 | 9.3 | **Administrar Noticias** |  | 12d | 2014-09-02 A | 2014-09-13 A |  | 100% |  |  |  |  |  | Paula | 480h | 480h |
| 167 | 9.3.1 | Registrar Noticias | manual | 12d | 2014-09-02 A | 2014-09-13 A |  | 100% |  |  |  |  |  | Paula | 96h | 96h |
| 168 | 9.3.2 | Modificar Noticias | manual | 12d | 2014-09-02 A | 2014-09-13 A |  | 100% |  |  |  |  |  | Paula | 96h | 96h |
| 169 | 9.3.3 | Eliminar Noticias | manual | 12d | 2014-09-02 A | 2014-09-13 A |  | 100% |  |  |  |  |  | Paula | 96h | 96h |
| 170 | 9.3.4 | Consultar Noticias | manual | 12d | 2014-09-02 A | 2014-09-13 A |  | 100% |  |  |  |  |  | Paula | 96h | 96h |
| 171 | 9.4 | **Administrar Partidos** |  | 8d | 2014-09-13 A | 2014-09-20 A |  | 100% |  |  |  |  |  | Florencia; Facu | 192h | 192h |
| 172 | 9.4.1 | Diseño de IU | manual | 8d | 2014-09-13 A | 2014-09-20 A |  | 100% |  |  |  |  |  | Facu | 64h | 64h |
| 173 | 9.5 | Modificación de datos de un usuario | manual | 4d | 2014-08-30 A | 2014-09-02 A |  | 100% |  |  |  |  |  | Florencia | 32h | 32h |
| 174 | 9.6 | Corrección de Bugs | manual | 12d | 2014-09-09 A | 2014-09-20 A |  | 100% |  |  |  |  |  | Antonio; Facu | 192h | 192h |
| 175 | 10 | Realizar Sprint Review | manual | 1d | 2014-09-20 A | 2014-09-20 A |  | 100% |  |  |  |  |  | Antonio; Facu; Florencia; Paula | 32h | 32h |
| 176 | 11 | Realizar reunión retrospectiva |  | 1d | 2014-05-03 A | 2014-05-03 A |  | 100% |  |  |  |  |  |  |  |  |
| 177 | 12 | **Sprint 6** |  | 22d | 2014-09-20 A | 2014-10-11 |  | 1% | 21.82d |  |  |  |  |  | 2160h | 32h |
| 178 | 12.1 | Realizar Sprint Planning | manual | 1d | 2014-09-20 A | 2014-09-20 A |  | 100% |  |  |  |  |  | Antonio; Facu; Florencia; Paula | 32h | 32h |
| 179 | 12.2 | Generar fixture todos contra todos una fase - muchos grupos | manual | 8d | 2014-09-20 | 2014-09-27 |  |  |  |  |  |  |  | Antonio; Florencia | 128h |  |
| 180 | 12.3 | Modificar Configuracion de edición | manual | 8d | 2014-09-20 | 2014-09-27 |  |  |  |  |  |  |  | Florencia | 64h |  |
| 181 | 12.4 | Registrar para un partido fecha, hora y arbitro a asignar | manual | 18d | 2014-09-20 | 2014-10-07 |  |  |  |  |  |  |  | Facu; Paula | 288h |  |
| 182 | 12.5 | Registrar post partido, sanciones, goles, cambios, jugadores que jugaron | manual | 18d | 2014-09-20 | 2014-10-07 |  |  |  |  |  |  |  | Facu; Paula | 288h |  |
| 183 | 12.6 | Modificar orden de las fechas de fixture una fase - 1 grupo, todos contra todos | manual | 8d | 2014-09-20 | 2014-09-27 |  |  |  |  |  |  |  | Facu; Paula | 128h |  |
| 184 | 12.7 | Diseño de la solución para registrar partidos | manual | 8d | 2014-09-23 | 2014-09-30 |  |  |  |  |  |  |  | Antonio; Facu; Florencia; Paula | 256h |  |
| 185 | 12.8 | Actualizar BD | manual | 8d | 2014-09-20 | 2014-09-27 |  |  |  |  |  |  |  | Paula | 64h |  |
| 186 | 12.9 | Generar fixture Una fase por eliminatoria | manual | 12d | 2014-09-30 | 2014-10-11 |  |  |  |  |  |  |  | Antonio; Florencia | 192h |  |
| 187 | 12.10 | Testear todas las funcionalidades | manual | 15d | 2014-09-20 | 2014-10-04 |  |  |  |  |  |  |  | Florencia; Paula | 240h |  |
| 188 | 12.11 | Corrección de Bugs | manual | 15d | 2014-09-20 | 2014-10-04 |  |  |  |  |  |  |  | Antonio; Facu; Florencia; Paula | 480h |  |
| 189 | 13 | Realizar reunión retrospectiva |  | 1d | 2015-01-03 | 2015-01-03 |  |  |  |  | -85d | 0d | start no earlier than 2015-01-03 |  |  |  |

| ID | WBS | Task | Type | Duration | Start | Finish | Predecessors | Total slack | Free slack | Constraint |
| --- | --- | --- | --- | --- | --- | --- | --- | --- | --- | --- |
| 190 | 14 | **Sprint 7** |  | 22d | 2014-10-11 | 2014-11-01 | 189 |  |  |  |
| 191 | 14.1 | Realizar Sprint Planning | manual | 1d | 2014-10-11 | 2014-10-11 |  |  |  |  |
| 192 | 14.2 | Generar fixture mas de una fase | manual | 1d? | 2014-10-11 | 2014-10-11 |  |  |  |  |
| 193 | 14.3 | <Tarea nueva> | manual | 1d? | 2014-10-11 | 2014-10-11 |  |  |  |  |
| 194 | 14.4 | Armar Manual de usuario | manual | 1d | 2014-10-11 | 2014-10-11 |  |  |  |  |
| 195 | 14.5 | Realizar Sprint Review | manual | 1d | 2014-10-11 | 2014-10-11 |  |  |  |  |
| 196 | 15 | Realizar reunión retrospectiva |  | 1d | 2015-01-10 | 2015-01-10 |  | -71d | 0d | start no earlier than 2015-01-10 |
| 197 | 16 | **Sprint 8** |  | 22d | 2014-11-01 | 2014-11-22 | 196 |  |  |  |
| 198 | 16.1 | Realizar Sprint Planning | manual | 1d | 2014-11-01 | 2014-11-01 |  |  |  |  |
| 199 | 16.2 | Analizar y Especificar los requerimientos | manual | 1d | 2014-11-01 | 2014-11-01 |  |  |  |  |
| 200 | 16.3 | **Diseñar Solución** |  | 1d? | 2014-11-01 | 2014-11-01 |  |  |  |  |
| 201 | 16.3.1 | Actualizar modelos existentes | manual | 1d | 2014-11-01 | 2014-11-01 |  |  |  |  |
| 202 | 16.3.2 | Crear nuevos modelos | manual | 1d | 2014-11-01 | 2014-11-01 |  |  |  |  |
| 203 | 16.4 | Desarrollar | manual | 1d | 2014-11-01 | 2014-11-01 |  |  |  |  |
| 204 | 16.5 | Testear | manual | 1d | 2014-11-01 | 2014-11-01 |  |  |  |  |
| 205 | 16.6 | Implementar | manual | 1d | 2014-11-01 | 2014-11-01 |  |  |  |  |
| 206 | 16.7 | Gestionar cambios | manual | 1d | 2014-11-01 | 2014-11-01 |  |  |  |  |
| 207 | 16.8 | Realizar seguimiento y control de riesgos | manual | 1d | 2014-11-01 | 2014-11-01 |  |  |  |  |
| 208 | 16.9 | Realizar Sprint Review | manual | 1d | 2014-11-01 | 2014-11-01 |  |  |  |  |
| 209 | 17 | Realizar reunión retrospectiva |  | 1d | 2015-03-11 | 2015-03-11 | 197 | -110d | 0d | start no earlier than 2015-03-11 |
| 210 | 18 | **Sprint 9** |  | 22d | 2014-11-22 | 2014-12-13 | 209 |  |  |  |
| 211 | 18.1 | Realizar Sprint Planning | manual | 1d | 2014-11-22 | 2014-11-22 |  |  |  |  |
| 212 | 18.2 | Analizar y Especificar los requerimientos | manual | 1d | 2014-11-22 | 2014-11-22 |  |  |  |  |
| 213 | 18.3 | **Diseñar Solución** |  | 1d? | 2014-11-22 | 2014-11-22 |  |  |  |  |
| 214 | 18.3.1 | Actualizar modelos existentes | manual | 1d | 2014-11-22 | 2014-11-22 |  |  |  |  |
| 215 | 18.3.2 | Crear nuevos modelos | manual | 1d | 2014-11-22 | 2014-11-22 |  |  |  |  |
| 216 | 18.4 | Desarrollar | manual | 1d | 2014-11-22 | 2014-11-22 |  |  |  |  |
| 217 | 18.5 | Testear | manual | 1d | 2014-11-22 | 2014-11-22 |  |  |  |  |
| 218 | 18.6 | Implementar | manual | 1d | 2014-11-22 | 2014-11-22 |  |  |  |  |
| 219 | 18.7 | Gestionar cambios | manual | 1d | 2014-11-22 | 2014-11-22 |  |  |  |  |
| 220 | 18.8 | Realizar seguimiento y control de riesgos | manual | 1d | 2014-11-22 | 2014-11-22 |  |  |  |  |
| 221 | 18.9 | Realizar Sprint Review | manual | 1d | 2014-11-22 | 2014-11-22 |  |  |  |  |
| 222 | 19 | Realizar reunión retrospectiva |  | 1d | 2014-05-03 | 2014-05-03 |  | 223d |  |  |

| ID | WBS | Task | Type | Duration | Start | Finish | Predecessors | Total slack | Free slack | Constraint |
| --- | --- | --- | --- | --- | --- | --- | --- | --- | --- | --- |
| 223 | 20 | **Sprint 10** |  | 22d | 2014-12-13 | 2015-01-03 | 222 |  |  |  |
| 224 | 20.1 | Realizar Sprint Planning | manual | 1d | 2014-12-13 | 2014-12-13 |  |  |  |  |
| 225 | 20.2 | Analizar y Especificar los requerimientos | manual | 1d | 2014-12-13 | 2014-12-13 |  |  |  |  |
| 226 | 20.3 | **Diseñar Solución** |  | 1d | 2014-12-13 | 2014-12-13 |  | 0d |  |  |
| 227 | 20.3.1 | Actualizar modelos existentes | manual | 1d | 2014-12-13 | 2014-12-13 |  |  |  |  |
| 228 | 20.3.2 | Crear nuevos modelos | manual | 1d | 2014-12-13 | 2014-12-13 |  |  |  |  |
| 229 | 20.4 | Desarrollar | manual | 1d | 2014-12-13 | 2014-12-13 |  |  |  |  |
| 230 | 20.5 | Testear | manual | 1d | 2014-12-13 | 2014-12-13 |  |  |  |  |
| 231 | 20.6 | Implementar | manual | 1d | 2014-12-13 | 2014-12-13 |  |  |  |  |
| 232 | 20.7 | Gestionar cambios | manual | 1d | 2014-12-13 | 2014-12-13 |  |  |  |  |
| 233 | 20.8 | Realizar seguimiento y control de riesgos | manual | 1d | 2014-12-13 | 2014-12-13 |  |  |  |  |
| 234 | 20.9 | Realizar Sprint Review | manual | 1d | 2014-12-13 | 2014-12-13 |  |  |  |  |
| 235 | 21 | Realizar reunión retrospectiva |  | 1d | 2015-01-03 | 2015-01-03 |  | -1d | 0d | start no earlier than 2015-01-03 |
| 236 | 22 | **Sprint 11** |  | 22d | 2015-01-03 | 2015-01-24 | 235 |  |  |  |
| 237 | 22.1 | Realizar Sprint Planning | manual | 1d | 2015-01-03 | 2015-01-03 |  |  |  |  |
| 238 | 22.2 | Analizar y Especificar los requerimientos | manual | 1d | 2015-01-03 | 2015-01-03 |  |  |  |  |
| 239 | 22.3 | Diseñar Solución | manual | 1d | 2015-01-03 | 2015-01-03 |  |  |  |  |
| 240 | 22.4 | Desarrollar | manual | 1d | 2015-01-03 | 2015-01-03 |  |  |  |  |
| 241 | 22.5 | Testear | manual | 1d | 2015-01-03 | 2015-01-03 |  |  |  |  |
| 242 | 22.6 | Implementar | manual | 1d | 2015-01-03 | 2015-01-03 |  |  |  |  |
| 243 | 22.7 | Gestionar cambios | manual | 1d | 2015-01-03 | 2015-01-03 |  |  |  |  |
| 244 | 22.8 | Realizar seguimiento y control de riesgos | manual | 1d | 2015-01-03 | 2015-01-03 |  |  |  |  |
| 245 | 22.9 | Realizar Sprint Review | manual | 1d | 2015-01-03 | 2015-01-03 |  |  |  |  |
| 246 | 23 | Realizar reunión retrospectiva | manual | 1d | 2015-01-24 | 2015-01-24 |  |  |  |  |

| ID | WBS | Task | Type | Duration | Start | Finish | Predecessors |
| --- | --- | --- | --- | --- | --- | --- | --- |
| 247 | 24 | **Sprint 12** |  | 21d | 2015-01-24 | 2015-02-13 | 246 |
| 248 | 24.1 | Realizar Sprint Planning | manual | 1d | 2015-01-24 | 2015-01-24 |  |
| 249 | 24.2 | Analizar y Especificar los requerimientos | manual | 1d | 2015-01-24 | 2015-01-24 |  |
| 250 | 24.3 | Diseñar Solución | manual | 1d | 2015-01-24 | 2015-01-24 |  |
| 251 | 24.4 | Desarrollar | manual | 1d | 2015-01-24 | 2015-01-24 |  |
| 252 | 24.5 | Testear | manual | 1d | 2015-01-24 | 2015-01-24 |  |
| 253 | 24.6 | Implementar | manual | 1d | 2015-01-24 | 2015-01-24 |  |
| 254 | 24.7 | Gestionar cambios | manual | 1d | 2015-01-24 | 2015-01-24 |  |
| 255 | 24.8 | Realizar seguimiento y control de riesgos | manual | 1d | 2015-01-24 | 2015-01-24 |  |
| 256 | 24.9 | Realizar Sprint Review | manual | 1d | 2015-01-24 | 2015-01-24 |  |
| 257 | 25 | Realizar reunión retrospectiva | manual | 1d | 2015-02-15 | 2015-02-15 |  |
| 258 | 26 | **Sprint 13** |  | 21d | 2015-02-15 | 2015-03-07 | 257 |
| 259 | 26.1 | Realizar Sprint Planning | manual | 1d | 2015-02-15 | 2015-02-15 |  |
| 260 | 26.2 | Analizar y Especificar los requerimientos | manual | 1d | 2015-02-15 | 2015-02-15 |  |
| 261 | 26.3 | Diseñar Solución | manual | 1d | 2015-02-15 | 2015-02-15 |  |
| 262 | 26.4 | Desarrollar | manual | 1d | 2015-02-15 | 2015-02-15 |  |
| 263 | 26.5 | Testear | manual | 1d | 2015-02-15 | 2015-02-15 |  |
| 264 | 26.6 | Implementar | manual | 1d | 2015-02-15 | 2015-02-15 |  |
| 265 | 26.7 | Gestionar cambios | manual | 1d | 2015-02-15 | 2015-02-15 |  |
| 266 | 26.8 | Realizar seguimiento y control de riesgos | manual | 1d | 2015-02-15 | 2015-02-15 |  |
| 267 | 26.9 | Realizar Sprint Review | manual | 1d | 2015-02-15 | 2015-02-15 |  |
| 268 | 27 | Realizar reunión retrospectiva | manual | 1d | 2015-03-07 | 2015-03-07 |  |
| 269 | 28 | **Sprint 14** |  | 22d | 2015-03-07 | 2015-03-28 | 268 |
| 270 | 28.1 | Realizar Sprint Planning | manual | 1d | 2015-03-07 | 2015-03-07 |  |
| 271 | 28.2 | Analizar y Especificar los requerimientos | manual | 1d | 2015-03-07 | 2015-03-07 |  |
| 272 | 28.3 | Diseñar Solución | manual | 1d | 2015-03-07 | 2015-03-07 |  |
| 273 | 28.4 | Desarrollar | manual | 1d | 2015-03-07 | 2015-03-07 |  |
| 274 | 28.5 | Testear | manual | 1d | 2015-03-07 | 2015-03-07 |  |
| 275 | 28.6 | Implementar | manual | 1d | 2015-03-07 | 2015-03-07 |  |
| 276 | 28.7 | Gestionar cambios | manual | 1d | 2015-03-07 | 2015-03-07 |  |
| 277 | 28.8 | Realizar seguimiento y control de riesgos | manual | 1d | 2015-03-07 | 2015-03-07 |  |
| 278 | 28.9 | Realizar Sprint Review | manual | 1d | 2015-03-07 | 2015-03-07 |  |
| 279 | 29 | Realizar reunión retrospectiva | manual | 1d | 2015-03-28 | 2015-03-28 |  |

| ID | WBS | Task | Type | Duration | Start | Finish | Predecessors | Total slack |
| --- | --- | --- | --- | --- | --- | --- | --- | --- |
| 280 | 30 | **Sprint 15** |  | 22d | 2015-03-28 | 2015-04-18 | 279 |  |
| 281 | 30.1 | **Realizar Presentación Final** |  | 1d | 2015-03-28 | 2015-03-28 |  | 0d |
| 282 | 30.1.1 | Preparar presentación | manual | 1d | 2015-03-28 | 2015-03-28 |  |  |
| 283 | 30.1.2 | Elaborar presentación | manual | 1d | 2015-03-28 | 2015-03-28 |  |  |
| 284 | 30.1.3 | Exponer | manual | 1d | 2015-03-28 | 2015-03-28 |  |  |
